# Cronograma

Schedule from MS Project, 2017-03-20 to 2017-06-30, costs in R$.

## Calendars

- Padrão: Mon-Fri 09:00-12:00, 13:00-18:00; Sat-Sun off.

## Resources

| Resource | Rate |
| --- | --- |
| Matheus | 10 |
| Any | 15 |
| Clayton | 10 |
| Felipe | 10 |
| Henrique | 12 |

## Schedule

| ID | WBS | Task | Duration | Start | Finish | Predecessors | Baseline start | Baseline finish | Baseline duration | Total slack | Free slack | Resources | Work | Cost |
| --- | --- | --- | --- | --- | --- | --- | --- | --- | --- | --- | --- | --- | --- | --- |
| 1 | 1 | **Sistema Contabil** | 67d? | 2017-03-30 | 2017-06-30 |  | 2017-03-27 | 2017-06-27 | 67d |  |  |  | 576h | 6,856 |
| 2 | 1.1 | **Analise** | 3d? | 2017-04-23 | 2017-04-25 |  | 2017-04-20 | 2017-04-24 | 3d |  |  |  | 120h | 1,416 |
| 3 | 1.1.1 | DRE | 5d | 2017-04-24 | 2017-04-28 |  | 2017-04-20 | 2017-04-21 | 16h | -2d | 0d | Matheus; Any | 80h | 1,000 |
| 4 | 1.1.2 | Orçamento Preliminar | 2d | 2017-05-01 | 2017-05-02 | 3 | 2017-04-24 | 2017-04-24 | 3h | 41d | 0d | Felipe | 16h | 160 |
| 5 | 1.1.3 | Cronograma Premilinar | 2d | 2017-05-01 | 2017-05-02 | 3 | 2017-04-24 | 2017-04-24 | 3h | 41d | 0d | Clayton | 16h | 160 |
| 6 | 1.1.4 | Cheklist | 1d | 2017-05-01 | 2017-05-01 | 3 | 2017-04-24 | 2017-04-24 | 2h | 42d |  | Henrique | 8h | 96 |
| 7 | 1.2 | **Planejamento** | 2d? | 2017-04-24 | 2017-04-25 |  | 2017-04-24 | 2017-04-25 | 2d |  |  |  | 56h | 616 |
| 8 | 1.2.1 | Registro de requisitos | 1d | 2017-05-01 | 2017-05-01 | 3 | 2017-04-24 | 2017-04-24 | 8h | 44d |  | Henrique | 8h | 96 |
| 9 | 1.2.2 | Registro de riscos | 1d | 2017-05-01 | 2017-05-01 | 3 | 2017-04-24 | 2017-04-24 | 8h | 44d |  | Any | 8h | 120 |
| 10 | 1.2.3 | Orçamento definitivo | 2d | 2017-05-03 | 2017-05-04 | 4 | 2017-04-24 | 2017-04-25 | 8h | 41d |  | Matheus | 16h | 160 |
| 11 | 1.2.4 | Cronograma definitivo | 1d | 2017-05-03 | 2017-05-03 | 5 | 2017-04-24 | 2017-04-25 | 8h | 42d |  | Felipe | 8h | 80 |
| 12 | 1.2.5 | Plano do projeto definitivo | 2d | 2017-04-26 | 2017-04-27 | 2 | 2017-04-25 | 2017-04-25 | 8h | 46d |  | Clayton | 16h | 160 |
| 13 | 1.3 | **Release 01** | 1d? | 2017-04-26 | 2017-04-26 |  | 2017-04-26 | 2017-05-23 | 20d |  |  |  | 160h | 2,048 |
| 14 | 1.3.1 | **Implementação / Teste** | 1d? | 2017-04-26 | 2017-04-26 |  | 2017-04-26 | 2017-05-02 | 4.25d |  |  |  | 160h | 2,048 |
| 15 | 1.3.1.1 | **Modelagem UML** | 1d? | 2017-04-26 | 2017-04-26 |  | 2017-04-26 | 2017-04-27 | 2d |  |  |  | 16h | 160 |
| 16 | 1.3.1.1.1 | Diagrama de caso de uso | 1d | 2017-05-01 | 2017-05-01 | 3 | 2017-04-26 | 2017-04-27 | 16h | -2d | 0d | Matheus | 8h | 80 |
| 17 | 1.3.1.1.2 | Diagrama de classes | 1d | 2017-05-01 | 2017-05-01 | 3 | 2017-04-26 | 2017-04-27 | 16h | -2d | 0d | Clayton | 8h | 80 |
| 18 | 1.3.1.2 | **Implementação** | 1d? | 2017-04-28 | 2017-04-28 | 15 | 2017-04-28 | 2017-05-02 | 2.25d |  |  |  | 144h | 1,888 |
| 19 | 1.3.1.2.1 | **[RFC01] Manter Usuários** | 1d? | 2017-04-28 | 2017-04-28 |  | 2017-04-28 | 2017-05-01 | 1.75d |  |  |  | 64h | 960 |
| 20 | 1.3.1.2.1.1 | [RFS01] Cadastrar Usuários | 2d | 2017-04-28 | 2017-05-01 | 15 | 2017-04-28 | 2017-05-01 | 14h | 41d | 0d | Any | 16h | 240 |
| 21 | 1.3.1.2.1.2 | [RFS02] Consultar Usuários | 2d | 2017-05-02 | 2017-05-03 | 20 | 2017-04-28 | 2017-05-01 | 14h | 41d |  | Any | 16h | 240 |
| 22 | 1.3.1.2.1.3 | [RFS03] Alterar Usuários | 2d | 2017-05-02 | 2017-05-03 | 20 | 2017-04-28 | 2017-05-01 | 14h | 41d |  | Any | 16h | 240 |
| 23 | 1.3.1.2.1.4 | [RFS04] Remover Usuários | 2d | 2017-05-02 | 2017-05-03 | 20 | 2017-04-28 | 2017-05-01 | 14h | 41d |  | Any | 16h | 240 |
| 24 | 1.3.1.2.2 | **[RFC02] Manter Contato** | 1d? | 2017-04-28 | 2017-04-28 |  | 2017-04-28 | 2017-05-01 | 1.5d |  |  |  | 64h | 768 |
| 25 | 1.3.1.2.2.1 | [RFS05] Cadastrar Contato | 2d | 2017-04-28 | 2017-05-01 | 15 | 2017-04-28 | 2017-05-01 | 12h | 41d | 0d | Henrique | 16h | 192 |
| 26 | 1.3.1.2.2.2 | [RFS06] Consultar Contato | 2d | 2017-05-02 | 2017-05-03 | 25 | 2017-04-28 | 2017-05-01 | 12h | 41d |  | Henrique | 16h | 192 |
| 27 | 1.3.1.2.2.3 | [RFS07] Alterar Contato | 2d | 2017-05-02 | 2017-05-03 | 25 | 2017-04-28 | 2017-05-01 | 12h | 41d |  | Henrique | 16h | 192 |
| 28 | 1.3.1.2.2.4 | [RFS08] Remover Contato | 2d | 2017-05-02 | 2017-05-03 | 25 | 2017-04-28 | 2017-05-01 | 12h | 41d |  | Henrique | 16h | 192 |

| ID | WBS | Task | Duration | Start | Finish | Predecessors | Baseline start | Baseline finish | Baseline duration | Total slack | Free slack | Resources | Work | Cost |
| --- | --- | --- | --- | --- | --- | --- | --- | --- | --- | --- | --- | --- | --- | --- |
| 29 | 1.3.1.2.3 | **Teste** | 1d? | 2017-05-01 | 2017-05-02 |  | 2017-05-01 | 2017-05-02 | 0.75d |  |  |  | 16h | 160 |
| 30 | 1.3.1.2.3.1 | [RFC01] Manter Usuários | 1d | 2017-05-01 | 2017-05-02 | 19 | 2017-05-01 | 2017-05-02 | 4h | 43.5d |  | Matheus | 8h | 80 |
| 31 | 1.3.1.2.3.2 | [RFC02] Manter Contato | 1d | 2017-05-01 | 2017-05-02 | 24 | 2017-05-01 | 2017-05-01 | 4h | 43.5d |  | Felipe | 8h | 80 |
| 32 | 1.4 | **Release 02** | 7d? | 2017-05-23 | 2017-05-31 |  | 2017-05-23 | 2017-05-31 | 7d |  |  |  | 144h | 1,496 |
| 33 | 1.4.1 | **Implementação / Teste** | 6d? | 2017-05-23 | 2017-05-30 |  | 2017-05-23 | 2017-05-30 | 6d |  |  |  | 128h | 1,280 |
| 34 | 1.4.1.1 | **Implementação** | 6d? | 2017-05-23 | 2017-05-30 |  | 2017-05-23 | 2017-05-30 | 6d |  |  |  | 128h | 1,280 |
| 35 | 1.4.1.1.1 | **[RFC03] Manter Conta Bancária** | 3d? | 2017-05-23 | 2017-05-25 |  | 2017-05-23 | 2017-05-25 | 3d |  |  |  | 64h | 640 |
| 36 | 1.4.1.1.1.1 | [RFS09] Cadastrar Conta Bancaria | 2d | 2017-05-23 | 2017-05-24 | 15 | 2017-05-23 | 2017-05-24 | 14h | 24d | 0d | Matheus | 16h | 160 |
| 37 | 1.4.1.1.1.2 | [RFS10] Consultar Conta Bancária | 2d | 2017-05-25 | 2017-05-26 | 36 | 2017-05-23 | 2017-05-24 | 14h | 24d |  | Matheus | 16h | 160 |
| 38 | 1.4.1.1.1.3 | [RFS11] Alterar Conta Bancaria | 2d | 2017-05-25 | 2017-05-26 | 36 | 2017-05-23 | 2017-05-24 | 14h | 24d |  | Matheus | 16h | 160 |
| 39 | 1.4.1.1.1.4 | [RFS12] Remover Conta Bancaria | 2d | 2017-05-25 | 2017-05-26 | 36 | 2017-05-23 | 2017-05-24 | 14h | 24d |  | Matheus | 16h | 160 |
| 40 | 1.4.1.1.2 | **[RFC04] Manter Despesas** | 3d? | 2017-05-23 | 2017-05-25 |  | 2017-05-23 | 2017-05-25 | 3d |  |  |  | 64h | 640 |
| 41 | 1.4.1.1.2.1 | [RFS13] Cadastrar Despesas | 2d | 2017-05-23 | 2017-05-24 | 15 | 2017-05-23 | 2017-05-24 | 12h | 24d | 0d | Felipe | 16h | 160 |
| 42 | 1.4.1.1.2.2 | [RFS14] Consultar Despesas | 2d | 2017-05-25 | 2017-05-26 | 41 | 2017-05-23 | 2017-05-24 | 12h | 24d |  | Felipe | 16h | 160 |
| 43 | 1.4.1.1.2.3 | [RFS15] Alterar Despesas | 2d | 2017-05-25 | 2017-05-26 | 41 | 2017-05-23 | 2017-05-24 | 12h | 24d |  | Felipe | 16h | 160 |
| 44 | 1.4.1.1.2.4 | [RFS16] Remover Despesas | 2d | 2017-05-25 | 2017-05-26 | 41 | 2017-05-23 | 2017-05-24 | 12h | 24d |  | Felipe | 16h | 160 |
| 45 | 1.4.2 | **Teste** | 1d? | 2017-05-24 | 2017-05-25 |  | 2017-05-24 | 2017-05-25 | 1d |  |  |  | 16h | 216 |
| 46 | 1.4.2.1 | [RFC03] Manter Conta Bancária | 1d | 2017-05-26 | 2017-05-26 | 35 | 2017-05-24 | 2017-05-25 | 4h | 25d |  | Any | 8h | 120 |
| 47 | 1.4.2.2 | [RFC04] Manter Despesas | 1d | 2017-05-26 | 2017-05-26 | 40 | 2017-05-24 | 2017-05-24 | 4h | 25d |  | Henrique | 8h | 96 |
| 48 | 1.5 | **Release 03** | 7d? | 2017-05-30 | 2017-06-07 |  | 2017-05-30 | 2017-06-07 | 7d |  |  |  | 96h | 1,280 |
| 49 | 1.5.1 | **Implementação / Teste** | 3d? | 2017-05-30 | 2017-06-01 |  | 2017-05-30 | 2017-06-01 | 3d |  |  |  | 80h | 1,120 |
| 50 | 1.5.1.1 | **Implementação** | 3d? | 2017-05-30 | 2017-06-01 |  | 2017-05-30 | 2017-06-01 | 3d |  |  |  | 80h | 1,120 |
| 51 | 1.5.1.1.1 | **[RFC05] Manter Receitas** | 3d? | 2017-05-30 | 2017-06-01 |  | 2017-05-30 | 2017-06-01 | 3d |  |  |  | 64h | 960 |
| 52 | 1.5.1.1.1.1 | [RFS17] Cadastrar Receitas | 2d | 2017-05-30 | 2017-05-31 | 15 | 2017-05-30 | 2017-05-31 | 14h | 17d | 0d | Any | 16h | 240 |
| 53 | 1.5.1.1.1.2 | [RFS18] Consultar Receitas | 2d | 2017-06-01 | 2017-06-02 | 52 | 2017-05-30 | 2017-05-31 | 14h | 17d |  | Any | 16h | 240 |
| 54 | 1.5.1.1.1.3 | [RFS19] Alterar Receitas | 2d | 2017-06-01 | 2017-06-02 | 52 | 2017-05-30 | 2017-05-31 | 14h | 17d |  | Any | 16h | 240 |
| 55 | 1.5.1.1.1.4 | [RFS20] Remover Receitas | 2d | 2017-06-01 | 2017-06-02 | 52 | 2017-05-30 | 2017-05-31 | 14h | 17d |  | Any | 16h | 240 |

| ID | WBS | Task | Type | Duration | Start | Finish | Predecessors | Baseline start | Baseline finish | Baseline duration | Total slack | Resources | Work | Cost |
| --- | --- | --- | --- | --- | --- | --- | --- | --- | --- | --- | --- | --- | --- | --- |
| 56 | 1.5.1.1.2 | **[RFC05] Gerar Relatórios** |  | 3d? | 2017-05-30 | 2017-06-01 |  | 2017-05-30 | 2017-06-01 | 3d |  |  | 16h | 160 |
| 57 | 1.5.1.1.2.1 | [RFS21] Gerar Relatório |  | 2d | 2017-05-30 | 2017-05-31 | 15 | 2017-05-30 | 2017-05-31 | 12h | 19d | Clayton | 16h | 160 |
| 58 | 1.5.2 | **Teste** |  | 1d? | 2017-05-31 | 2017-06-01 |  | 2017-05-31 | 2017-06-01 | 1d |  |  | 16h | 160 |
| 59 | 1.5.2.1 | [RFC05] Manter Receitas |  | 1d | 2017-06-02 | 2017-06-02 | 51 | 2017-06-02 | 2017-06-02 | 4h | 18d | Matheus | 8h | 80 |
| 60 | 1.5.2.2 | [RFC05] Gerar Relatório |  | 1d | 2017-06-02 | 2017-06-02 | 56 | 2017-06-02 | 2017-06-02 | 4h | 18d | Felipe | 8h | 80 |
| 61 | 1.6 | **Release 4** |  | 14d? | 2017-03-20 | 2017-04-06 |  | 2017-03-20 | 2017-04-06 | 14d |  |  |  |  |
| 62 | 1.6.1 | **Fechamento** |  | 14d? | 2017-03-20 | 2017-04-06 |  | 2017-03-20 | 2017-04-06 | 14d |  |  |  |  |
| 63 | 1.6.1.1 | Implantação | manual | 1d? | 2017-06-08 | 2017-06-08 | 48 | 2017-06-08 | 2017-06-14 | 5d |  |  |  |  |
| 64 | 1.6.1.2 | Avaliação | manual | 1d? | 2017-06-15 | 2017-06-15 | 63 | 2017-06-15 | 2017-06-21 | 5d |  |  |  |  |
| 65 | 1.6.1.3 | Conclusão | milestone, manual | 0d? | 2017-06-22 | 2017-06-22 | 64 | 2017-06-22 | 2017-07-11 | 14d |  |  |  |  |
